# Plan de Proyecto

Schedule from MS Project, 2019-03-21 to 2019-04-29, costs in $, A marks actual dates.

## Calendars

- Estándar: Mon-Fri 07:00-14:00; Sat-Sun off.

## Resources

| Resource | Group | Rate |
| --- | --- | --- |
| Marlon | Analista | 20 |
| Jhonathan | Analista | 20 |
| Hector | Analista | 20 |
| Mani |  | 20 |
| Jared |  | 20 |
| Jose |  | 20 |
| Aldo | Proyect Manager | 40 |

## Schedule

| ID | WBS | Task | Duration | Start | Finish | Predecessors | Complete | Remaining | Baseline start | Baseline finish | Baseline duration | Total slack | Resources | Work | Actual work | Cost | Baseline cost | Actual cost |
| --- | --- | --- | --- | --- | --- | --- | --- | --- | --- | --- | --- | --- | --- | --- | --- | --- | --- | --- |
| 1 | 1 | **Diseño del software CBBB** | 24d | 2019-03-21 A | 2019-04-29 |  | 13% | 21d | 2019-03-21 | 2019-04-16 | 16d | 0d |  | 504h | 64h | 10,880 | 6,880 | 1,600 |
| 2 | 1.1 | **Fase 1 Ingenieria de requerimientos** | 24d | 2019-03-21 A | 2019-04-29 |  | 13% | 21d | 2019-03-21 | 2019-04-16 | 16d | 0d |  | 504h | 64h | 10,880 | 6,880 | 1,600 |
| 3 | 1.1.1 | **Obtención de requerimientos** | 9d | 2019-03-21 A | 2019-04-04 |  | 33% | 6d | 2019-03-21 | 2019-04-02 | 7d | 0d |  | 256h | 64h | 5,440 | 4,000 | 1,600 |
| 4 | 1.1.1.1 | **Elaborar encuesta dirigida a estudiantes de la FEI** | 2d | 2019-03-21 A | 2019-03-25 |  | 50% | 1d | 2019-03-21 | 2019-03-25 | 2d | 0d |  | 96h | 48h | 1,920 | 1,920 | 960 |
| 5 | 1.1.1.1.1 | Lista de preguntas | 2d | 2019-03-21 A | 2019-03-25 |  | 50% | 1d | 2019-03-21 | 2019-03-25 | 2d | 0d | Jhonathan; Hector; Jared; Jose; Mani; Marlon | 96h | 48h | 1,920 | 1,920 | 960 |
| 6 | 1.1.1.2 | **Aplicación de encuesta a estudiantes de la FEI** | 3d | 2019-03-25 | 2019-03-28 |  |  |  | 2019-03-25 | 2019-03-27 | 2d | 0d |  | 112h |  | 2,240 | 1,280 |  |
| 7 | 1.1.1.2.1 | 15 resultados de encuestas | 2d | 2019-03-25 | 2019-03-27 | 5 |  |  | 2019-03-25 | 2019-03-26 | 1d | 0d | Hector; Jared; Jhonathan; Jose; Mani; Marlon | 96h |  | 1,920 | 960 |  |
| 8 | 1.1.1.2.2 | Graficas o estadisticas de resultados | 1d | 2019-03-27 | 2019-03-28 | 7 |  |  | 2019-03-26 | 2019-03-27 | 1d | 0d | Jared; Jhonathan | 16h |  | 320 | 320 |  |
| 9 | 1.1.1.3 | **Generar un listado de restricciones y atributos de calidad según los resultados de las encuestas** | 1d | 2019-03-29 | 2019-04-01 |  |  |  | 2019-03-27 | 2019-03-28 | 1d | 0d |  | 16h |  | 320 | 320 |  |
| 10 | 1.1.1.3.1 | Lista inicial de atributos de calidad y restricciones | 1d | 2019-03-29 | 2019-04-01 | 8 |  |  | 2019-03-27 | 2019-03-28 | 1d | 0d | Hector; Marlon | 16h |  | 320 | 320 |  |
| 11 | 1.1.1.4 | **Realizar un listado de stakeholders basándose en los resultados de las encuestas** | 1d | 2019-04-01 | 2019-04-02 | 9 |  |  | 2019-03-29 | 2019-04-01 | 1d | 0d |  | 16h |  | 320 | 320 |  |
| 12 | 1.1.1.4.1 | Lista de Stakeholders (Expertos del negocio) | 1d | 2019-04-01 | 2019-04-02 |  |  |  | 2019-03-29 | 2019-04-01 | 1d | 0d | Jose; Mani | 16h |  | 320 | 320 |  |
| 13 | 1.1.1.5 | **Escribir documento de visión y alcance (SI)** | 2d | 2019-04-02 A | 2019-04-04 A | 11 | 100% |  | 2019-04-01 | 2019-04-02 | 1d |  |  | 16h | 16h | 640 | 160 | 640 |
| 14 | 1.1.1.5.1 | Documento de visión y alcance (SI) | 2d | 2019-04-02 A | 2019-04-04 A |  | 100% |  | 2019-04-01 | 2019-04-02 | 1d |  | Aldo | 16h | 16h | 640 | 160 | 640 |
| 15 | 1.1.2 | **Análisis de requerimientos** | 15d | 2019-04-04 | 2019-04-29 | 3 |  |  | 2019-04-02 | 2019-04-16 | 9d | 0d |  | 248h |  | 5,440 | 2,880 |  |
| 16 | 1.1.2.1 | **Crear una interfaz de usuario para un primer vistazo de la aplicación** | 3d | 2019-04-04 | 2019-04-09 |  |  |  | 2019-04-02 | 2019-04-04 | 2d | 0d |  | 48h |  | 960 | 640 |  |
| 17 | 1.1.2.1.1 | Prototipo de la aplicación (Sketch) | 3d | 2019-04-04 | 2019-04-09 |  |  |  | 2019-04-02 | 2019-04-04 | 2d | 0d | Hector; Marlon | 48h |  | 960 | 640 |  |
| 18 | 1.1.2.2 | **Escribir un diagrama de contexto** | 2d | 2019-04-10 | 2019-04-12 | 16 |  |  | 2019-04-04 | 2019-04-05 | 1d | 0d |  | 32h |  | 640 | 320 |  |
| 19 | 1.1.2.2.1 | Diagrama de contexto | 2d | 2019-04-10 | 2019-04-12 |  |  |  | 2019-04-04 | 2019-04-05 | 1d | 0d | Jared; Jhonathan | 32h |  | 640 | 320 |  |
| 20 | 1.1.2.3 | **Modelar los requerimientos obtenidos** | 3d | 2019-04-12 | 2019-04-17 | 18 |  |  | 2019-04-05 | 2019-04-09 | 2d | 0d |  | 48h |  | 960 | 640 |  |
| 21 | 1.1.2.3.1 | Modelo de casos de uso | 3d | 2019-04-12 | 2019-04-17 |  |  |  | 2019-04-05 | 2019-04-09 | 2d | 0d | Jose; Mani | 48h |  | 960 | 640 |  |
| 22 | 1.1.2.4 | **Crear un glosario del funcionamiento del negocio** | 2d | 2019-04-17 | 2019-04-19 | 20 |  |  | 2019-04-10 | 2019-04-11 | 1d | 0d |  | 48h |  | 960 | 480 |  |
| 23 | 1.1.2.4.1 | Modelo de Dominio | 2d | 2019-04-17 | 2019-04-19 |  |  |  | 2019-04-10 | 2019-04-11 | 1d | 0d | Hector; Mani; Marlon | 48h |  | 960 | 480 |  |
| 24 | 1.1.2.5 | **Realizar un análisis de factibilidad** | 3d | 2019-04-22 | 2019-04-25 | 22 |  |  | 2019-04-11 | 2019-04-15 | 2d | 0d |  | 24h |  | 960 | 320 |  |
| 25 | 1.1.2.5.1 | Documento de análisis de factibilidad | 3d | 2019-04-22 | 2019-04-25 |  |  |  | 2019-04-11 | 2019-04-15 | 2d | 0d | Aldo | 24h |  | 960 | 320 |  |

| ID | WBS | Task | Duration | Start | Finish | Predecessors | Baseline start | Baseline finish | Baseline duration | Total slack | Resources | Work | Cost | Baseline cost |
| --- | --- | --- | --- | --- | --- | --- | --- | --- | --- | --- | --- | --- | --- | --- |
| 26 | 1.1.2.6 | **Priorizar los requerimientos** | 2d | 2019-04-25 | 2019-04-29 | 24 | 2019-04-15 | 2019-04-16 | 1d | 0d |  | 48h | 960 | 480 |
| 27 | 1.1.2.6.1 | Lista de requerimientos priorizados | 2d | 2019-04-25 | 2019-04-29 |  | 2019-04-15 | 2019-04-16 | 1d | 0d | Jared; Jhonathan; Jose | 48h | 960 | 480 |
